# 兆豐_專案時程預估表

Schedule from MS Project, 2022-03-28 to 2022-08-08.

## Calendars

- 標準: Mon-Fri 08:00-12:00, 13:00-17:00; Sat-Sun off. Exceptions (off unless hours are given): 2022-04-04 to 2022-04-05 (放假), 2022-05-02 (放假), 2022-06-03 (放假).

## Resources

| Resource |
| --- |
| Gigi |
| 兆豐 |
| Alvin |
| Vic |
| 小米 |

## Schedule

| ID | WBS | Task | Type | Duration | Start | Finish | Predecessors | Constraint | Resources | Work | 備註 |
| --- | --- | --- | --- | --- | --- | --- | --- | --- | --- | --- | --- |
| 1 | 1 | **兆豐票券官網開發及建置** |  | 66d? | 2022-03-28 | 2022-07-01 |  |  |  | 1952h |  |
| 2 | 1.1 | **需求確認** |  | 8d? | 2022-03-28 | 2022-04-08 |  |  |  | 88h |  |
| 3 | 1.1.1 | 架構討論會議 | manual | 2d | 2022-03-28 | 2022-03-29 |  | start no earlier than 2022-03-28 | Gigi; 兆豐 | 32h |  |
| 4 | 1.1.2 | 線稿及樹狀圖製作 | manual | 5d | 2022-03-30 | 2022-04-07 | 3 | start no earlier than 2022-03-30 | Gigi | 40h |  |
| 5 | 1.1.3 | 線稿確認 | manual | 1d? | 2022-04-08 | 2022-04-08 | 4 |  | Gigi; 兆豐 | 16h |  |
| 6 | 1.2 | 客戶提供素材資料 | manual | 10d | 2022-03-30 | 2022-04-14 | 3 |  | Gigi; 兆豐 | 160h |  |
| 7 | 1.3 | 專案啟動會議 | manual | 1d? | 2022-04-13 | 2022-04-13 |  | start no earlier than 2022-04-13 | Gigi; Alvin; Vic | 24h |  |
| 8 | 1.4 | **開發** |  | 53d | 2022-03-30 | 2022-06-16 |  |  |  | 688h |  |
| 9 | 1.4.1 | 首頁設計 | manual | 2d | 2022-03-30 | 2022-03-31 | 3 |  | 小米 | 16h |  |
| 10 | 1.4.2 | 首頁設計確認及修改 | manual | 9d | 2022-04-01 | 2022-04-15 | 9 |  | Gigi; 兆豐 | 144h |  |
| 11 | 1.4.3 | 內頁設計 | manual | 7d | 2022-04-11 | 2022-04-19 | 9 | start no earlier than 2022-04-11 | 小米 | 56h |  |
| 12 | 1.4.4 | 內頁設計確認及修改 | manual | 10d | 2022-04-20 | 2022-05-04 | 11 |  | Gigi; 兆豐 | 160h |  |
| 13 | 1.4.5 | 切版 | manual | 12d | 2022-05-05 | 2022-05-20 | 12 |  | Alvin | 96h |  |
| 14 | 1.4.6 | 系統及資料庫設計 | manual | 1d | 2022-04-14 | 2022-04-14 | 7 |  | Vic | 8h |  |
| 15 | 1.4.7 | 後台程式開發 | manual | 12d | 2022-04-15 | 2022-05-03 | 14 |  | Vic | 96h |  |
| 16 | 1.4.8 | 前台程式開發 | manual | 11d | 2022-05-19 | 2022-06-02 | 13, 15 |  | Vic | 88h |  |
| 17 | 1.4.9 | DB架構及DB schema研究、串接 | manual | 3d | 2022-06-10 | 2022-06-14 | 16 |  | Vic | 24h | 前台程式開發前一定要確認到表格及環境相關資料 |
| 18 | 1.5 | **系統測試** |  | 7d | 2022-06-17 | 2022-06-27 |  |  |  | 912h |  |
| 19 | 1.5.1 | 系統測試、版面及程式修改 | manual | 26d | 2022-06-15 | 2022-07-20 | 8 |  | Gigi; 兆豐; Alvin; Vic | 832h | 因客戶增加新需求、內部多部門測試，故測試期較長 |
| 20 | 1.5.2 | 圖片確認及購買 | manual | 5d | 2022-06-16 | 2022-06-22 |  | start no earlier than 2022-06-16 | Gigi; 兆豐 | 80h |  |
| 21 | 1.6 | 系統上線 | manual | 1d | 2022-07-26 | 2022-07-26 | 18 |  | Gigi; Alvin; Vic; 兆豐 | 32h |  |
| 22 | 1.7 | 驗收 | manual | 1d | 2022-07-29 | 2022-07-29 | 21 |  | Gigi; 兆豐 | 16h |  |
| 23 | 1.8 | 專案結案 | manual | 1d | 2022-08-08 | 2022-08-08 | 22 |  | Gigi; Alvin; Vic; 兆豐 | 32h |  |
